How a schedule from MS Project changed from version to version. A marks actual dates.

## Version 1 (saved 2021-10-23)

Note of the change: Merge branch 'main' of github.com:lenovo-wu/G11ZUCC

| ID | WBS | Task | Duration | Start | Finish | Predecessors | Complete | Constraint |
| --- | --- | --- | --- | --- | --- | --- | --- | --- |
| 1 | 1 | **软件项目开发** | 81d? | 2021-09-15 A | 2022-01-05 |  | 26% |  |
| 2 | 1.1 | **项目介绍及PPT** | 1d | 2021-09-15 A | 2021-09-15 A |  | 100% |  |
| 3 |  | 课题选择 | 0.25d | 2021-09-15 A | 2021-09-15 A |  | 100% |  |
| 4 |  | 项目介绍word | 0.25d | 2021-09-15 A | 2021-09-15 A |  | 100% |  |
| 5 |  | 项目介绍PPT | 0.25d | 2021-09-15 A | 2021-09-15 A |  | 100% |  |
| 6 |  | 项目介绍评审 | 1d | 2021-09-15 A | 2021-09-15 A |  | 100% |  |
| 7 | 1.2 | **项目计划及PPT** | 6d? | 2021-09-22 A | 2021-09-29 | 2 | 100% |  |
| 8 |  | 小组会议 | 0.12d? | 2021-09-22 A | 2021-09-22 A |  | 100% |  |
| 9 |  | 项目计划word初稿 | 0.25d? | 2021-09-22 A | 2021-09-22 A |  | 100% |  |
| 10 |  | 小组会议 | 0.12d? | 2021-09-24 A | 2021-09-24 A |  | 100% | start no earlier than 2021-09-24 |
| 11 |  | 项目计划初版修订 | 0.25d? | 2021-09-27 A | 2021-09-27 A |  | 100% | start no earlier than 2021-09-27 |
| 12 |  | 项目计划PPT制作 | 0.25d? | 2021-09-28 A | 2021-09-28 A |  | 100% | start no earlier than 2021-09-28 |
| 13 |  | 项目计划评审 | 1d | 2021-09-22 A | 2021-09-22 A |  | 100% |  |
| 14 | 1.3 | **项目计划修订** | 10d? | 2021-09-30 | 2021-10-13 A | 7 | 100% |  |
| 15 |  | 项目计划修订 | 2d | 2021-10-02 A | 2021-10-04 A |  | 100% |  |
| 16 |  | 小组会议 | 1d | 2021-10-03 A | 2021-10-03 A |  | 100% |  |
| 17 |  | 项目计划PPT修订 | 2d | 2021-10-05 A | 2021-10-06 A |  | 100% |  |
| 18 |  | 团建 | 1d | 2021-10-07 A | 2021-10-07 A |  | 100% |  |
| 19 |  | 可行性分析 | 1d | 2021-10-13 A | 2021-10-13 A |  | 100% |  |
| 20 |  | 项目计划书修订 | 1d | 2021-10-13 A | 2021-10-13 A |  | 100% |  |
| 21 |  | 项目计划PPT修订 | 1d | 2021-10-13 A | 2021-10-13 A |  | 100% |  |
| 22 |  | 项目计划评审 | 1d | 2021-10-13 A | 2021-10-13 A |  | 100% |  |
| 23 | 1.4 | **可行性分析报告** | 8d? | 2021-10-14 | 2021-10-23 A | 14 | 100% |  |
| 24 |  | 小组会议 | 1d | 2021-10-22 A | 2021-10-22 A |  | 100% |  |
| 25 |  | 可行性分析报告初稿 | 1d | 2021-10-16 A | 2021-10-16 A |  | 100% |  |
| 26 |  | 可行性分析 | 1d | 2021-10-15 A | 2021-10-15 A |  | 100% |  |
| 27 |  | 绘制数据流图 | 1d | 2021-10-15 A | 2021-10-15 A |  | 100% |  |
| 28 |  | 绘制系统流程图 | 1d | 2021-10-15 A | 2021-10-15 A |  | 100% |  |
| 29 |  | 可行性分析修改 | 1d | 2021-10-16 A | 2021-10-16 A |  | 100% |  |
| 30 |  | 可行性分析报告评审 | 1d | 2021-10-20 A | 2021-10-20 A |  | 100% |  |
| 31 |  | 复查系统规模和目标 | 1d | 2021-10-22 A | 2021-10-22 A |  | 100% |  |
| 32 |  | 研究目前正在使用的系统 | 1d | 2021-10-23 A | 2021-10-23 A |  | 100% |  |
| 33 |  | 导出新系统的高层逻辑模型 | 1d | 2021-10-23 A | 2021-10-23 A |  | 100% |  |
| 34 |  | 进一步定义问题 | 1d | 2021-10-23 A | 2021-10-23 A |  | 100% |  |
| 35 |  | 导出和评价供选择的解法 | 1d | 2021-10-23 A | 2021-10-23 A |  | 100% |  |
| 36 |  | 推荐行动方针 | 1d | 2021-10-23 A | 2021-10-23 A |  | 100% |  |
| 37 |  | 草拟开发计划 | 1d | 2021-10-23 A | 2021-10-23 A |  | 100% |  |
| 38 |  | 书写文档提交审查 | 1d | 2021-10-23 A | 2021-10-23 A |  | 100% |  |
| 39 |  | 项目计划书修订 | 1d | 2021-10-23 A | 2021-10-23 A |  | 100% |  |
| 40 |  | 可行性分析报告修订 | 1d | 2021-10-23 A | 2021-10-23 A |  | 100% |  |
| 41 | 1.5 | **需求说明SRS，需求评审PPT** | 5d | 2021-10-21 | 2021-10-27 | 23 |  |  |
| 42 |  | 需求说明初稿 | 0.25d | 2021-10-22 A | 2021-10-22 |  |  |  |
| 43 |  | 小组会议 | 1d | 2021-10-23 | 2021-10-23 |  |  |  |
| 44 |  | 原型设计 | 1d | 2021-10-22 | 2021-10-22 |  |  |  |
| 45 |  | 绘制需求用图 | 1d | 2021-10-22 | 2021-10-22 |  |  |  |
| 46 |  | 绘制ER图 | 1d | 2021-10-22 | 2021-10-22 |  |  |  |
| 47 |  | 绘制层次方框图 | 1d | 2021-10-22 | 2021-10-22 |  |  |  |
| 48 |  | 需求说明初稿修改 | 1d | 2021-10-23 | 2021-10-23 |  |  |  |
| 49 |  | 需求说明PPT | 2d | 2021-10-23 | 2021-10-25 |  |  |  |
| 50 | 1.6 | **SRS修订** | 5d | 2021-10-28 | 2021-11-03 | 41 |  |  |
| 51 |  | 访谈 | 2d | 2021-10-29 | 2021-11-01 |  |  |  |
| 52 |  | 小组会议 | 1d | 2021-10-29 | 2021-10-29 |  |  |  |
| 53 |  | 需求说明修订 | 1d | 2021-10-29 | 2021-10-29 |  |  |  |
| 54 |  | 需求说明PPT修改 | 1d | 2021-10-30 | 2021-10-30 |  |  |  |
| 55 | 1.7 | **总体设计报告** | 5d | 2021-11-04 | 2021-11-10 | 50 |  |  |
| 56 |  | 小组会议 | 1d | 2021-11-05 | 2021-11-05 |  |  |  |
| 57 |  | 总体设计报告初稿 | 2d | 2021-11-05 | 2021-11-08 |  |  |  |
| 58 |  | 设想供选择的方案 | 1d | 2021-11-05 | 2021-11-05 |  |  |  |
| 59 |  | 选择合理的方案 | 1d | 2021-11-05 | 2021-11-05 |  |  |  |
| 60 |  | 推荐最佳方案 | 1d | 2021-11-05 | 2021-11-05 |  |  |  |
| 61 |  | 功能分解 | 1d | 2021-11-05 | 2021-11-05 |  |  |  |
| 62 |  | 设计软件结构 | 2d | 2021-11-06 | 2021-11-08 |  |  |  |
| 63 |  | 设计数据库 | 2d | 2021-11-06 | 2021-11-08 |  |  |  |
| 64 |  | 制定测试计划 | 2d | 2021-11-06 | 2021-11-08 |  |  |  |
| 65 |  | 书写文档 | 1d | 2021-11-06 | 2021-11-06 |  |  |  |
| 66 |  | 审查和复查 | 1d | 2021-11-06 | 2021-11-06 |  |  |  |
| 67 | 1.8 | **详细设计报告** | 5d | 2021-11-11 | 2021-11-17 | 55 |  |  |
| 68 |  | 小组会议 | 1d | 2021-11-12 | 2021-11-12 |  |  |  |
| 69 |  | 详细设计报告初稿 | 2d | 2021-11-12 | 2021-11-15 |  |  |  |
| 70 |  | 人机界面完善 | 1d | 2021-11-12 | 2021-11-12 |  |  |  |

| ID | WBS | Task | Duration | Start | Finish | Predecessors |
| --- | --- | --- | --- | --- | --- | --- |
| 71 |  | 过程设计 | 1d | 2021-11-12 | 2021-11-12 |  |
| 72 |  | PDL编写 | 2d | 2021-11-13 | 2021-11-15 |  |
| 73 |  | 小组会议 | 1d | 2021-11-13 | 2021-11-13 |  |
| 74 |  | 详细设计报告初稿修订 | 2d | 2021-11-13 | 2021-11-15 |  |
| 75 |  | 详细设计报告PPT制作 | 2d | 2021-11-13 | 2021-11-15 |  |
| 76 | 1.9 | **总体设计及详细设计修订+翻转PPT1** | 5d | 2021-11-18 | 2021-11-24 | 67 |
| 77 |  | 小组会议 | 1d | 2021-11-19 | 2021-11-19 |  |
| 78 |  | 总体提报告及详细报告修订 | 1d | 2021-11-19 | 2021-11-19 |  |
| 79 |  | 总体提报告及详细报告PPT修订 | 1d | 2021-11-19 | 2021-11-19 |  |
| 80 | 1.10 | **代码清单+测试用例+翻转PPT2** | 5d? | 2021-11-25 | 2021-12-01 | 76 |
| 81 |  | 小组会议 | 1d | 2021-11-25 | 2021-11-25 |  |
| 82 |  | 确定代码编写风格 | 1d | 2021-11-25 | 2021-11-25 |  |
| 83 |  | 数据库建立 | 1d | 2021-11-25 | 2021-11-25 |  |
| 84 |  | 服务器部署 | 1d | 2021-11-25 | 2021-11-25 |  |
| 85 | 1.10.5 | **代码编写及测试** | 4d | 2021-11-26 | 2021-12-01 |  |
| 86 | 1.10.5.1 | **代码编写** | 4d | 2021-11-26 | 2021-12-01 |  |
| 87 |  | 登录界面 | 1d | 2021-11-26 | 2021-11-26 |  |
| 88 |  | 注册与忘记密码界面 | 1d | 2021-11-26 | 2021-11-26 |  |
| 89 |  | 表白墙（发帖）模块 | 1d | 2021-11-26 | 2021-11-26 |  |
| 90 |  | 回帖模块 | 1d | 2021-11-26 | 2021-11-26 |  |
| 91 |  | 个人页面 | 1d | 2021-11-26 | 2021-11-26 |  |
| 92 |  | 管理员显示用户信息 | 1d | 2021-11-26 | 2021-11-26 |  |
| 93 |  | 管理员添加用户 | 1d | 2021-11-26 | 2021-11-26 |  |
| 94 |  | 管理员删除用户 | 1d | 2021-11-26 | 2021-11-26 |  |
| 95 |  | 修改密码页面 | 1d | 2021-11-26 | 2021-11-26 |  |
| 96 |  | 页面整合与跳转逻辑 | 1d | 2021-11-26 | 2021-11-26 |  |
| 97 |  | 代码走查 | 1d | 2021-11-27 | 2021-11-27 |  |
| 98 |  | 登录模块实现 | 1d | 2021-11-27 | 2021-11-27 |  |
| 99 |  | 管理员模块实现 | 1d | 2021-11-27 | 2021-11-27 |  |
| 100 |  | 代码走查 | 1d | 2021-11-27 | 2021-11-27 |  |
| 101 |  | 代码整合 | 1d | 2021-11-27 | 2021-11-27 |  |
| 102 | 1.10.5.2 | **软件测试** | 4d | 2021-11-28 | 2021-12-01 | 86 |
| 103 |  | 单元测试 | 1d | 2021-11-28 | 2021-11-28 |  |
| 104 |  | 集成测试 | 0d | 2021-12-01 | 2021-12-01 |  |
| 105 |  | 系统测试 | 0d | 2021-12-01 | 2021-12-01 |  |
| 106 | 1.11 | **系统测试报告** | 5d | 2021-12-02 | 2021-12-08 | 80 |
| 107 |  | 小组会议 | 1d | 2021-12-03 | 2021-12-03 |  |
| 108 |  | 系统实现及测试报告初稿 | 2d | 2021-12-03 | 2021-12-06 |  |
| 109 |  | 系统实现及测试报告初稿修订 | 1d | 2021-12-04 | 2021-12-04 |  |
| 110 |  | 系统实现及测试报告PPT制作 | 1d | 2021-12-04 | 2021-12-04 |  |
| 111 | 1.12 | **测试报告修订** | 5d? | 2021-12-09 | 2021-12-15 | 106 |
| 112 |  | 小组会议 | 1d | 2021-12-10 | 2021-12-10 |  |
| 113 |  | 用户确认 | 1d | 2021-12-10 | 2021-12-10 |  |
| 114 |  | 软件修改 | 1d | 2021-12-10 | 2021-12-10 |  |
| 115 |  | 重新测试 | 1d | 2021-12-10 | 2021-12-10 |  |
| 116 |  | 系统实现及测试报告修订 | 2d | 2021-12-11 | 2021-12-13 |  |
| 117 |  | 系统实现及测试报告PPT修订 | 2d | 2021-12-11 | 2021-12-13 |  |
| 118 | 1.13 | **项目总结报告，总评审PPT** | 10d | 2021-12-16 | 2021-12-29 | 111 |
| 119 |  | 小组会议 | 1d | 2021-12-17 | 2021-12-17 |  |
| 120 |  | 修改项目计划 | 2d | 2021-12-17 | 2021-12-20 |  |
| 121 |  | 修改需求分析 | 2d | 2021-12-17 | 2021-12-20 |  |
| 122 |  | 用户bug反馈，修改 | 2d | 2021-12-17 | 2021-12-20 |  |
| 123 |  | 修改设计报告 | 1d | 2021-12-17 | 2021-12-17 |  |
| 124 |  | 项目总结报告初稿 | 2d | 2021-12-18 | 2021-12-20 |  |
| 125 |  | 项目总结报告修改 | 1d | 2021-12-18 | 2021-12-18 |  |
| 126 |  | 项目总结PPT制作 | 1d | 2021-12-18 | 2021-12-18 |  |
| 127 |  | 课程作业评审 | 1d | 2022-01-05 | 2022-01-05 |  |

## Version 2 (saved 2021-10-24)

Note of the change: 更新 G11项目计划.mpp

Last finish stays 2022-01-05. Complete tasks 35 → 54.

Added:

| ID | Task | Duration | Start | Finish | Resources |
| --- | --- | --- | --- | --- | --- |
| 45 | **确定对系统的综合要求** | 0d | 2021-10-24 A | 2021-10-24 A | 郑航舰; 吴联想 |
| 46 | 功能需求 | 1d | 2021-10-24 A | 2021-10-24 A | 吴联想 |
| 47 | 性能需求 | 1d | 2021-10-24 A | 2021-10-24 A | 吴联想 |
| 48 | 可靠性和可用性需求 | 1d | 2021-10-24 A | 2021-10-24 A | 吴联想 |
| 49 | 出错处理需求 | 1d | 2021-10-24 A | 2021-10-24 A | 吴联想 |
| 50 | 接口需求 | 1d | 2021-10-24 A | 2021-10-24 A | 郑航舰 |
| 51 | 约束 | 1d | 2021-10-24 A | 2021-10-24 A | 郑航舰 |
| 52 | 逆向需求 | 1d | 2021-10-24 A | 2021-10-24 A | 郑航舰 |
| 53 | 将来可能提出的需求 | 1d | 2021-10-24 A | 2021-10-24 A | 郑航舰 |
| 54 | 分析系统的数据要求 | 1d | 2021-10-24 A | 2021-10-24 A | 王义博 |
| 58 | 数据流图 | 1d | 2021-10-24 A | 2021-10-24 A | 王义博 |
| 59 | 数据字典 | 1d | 2021-10-24 A | 2021-10-24 A | 王义博 |
| 62 | 项目计划书、project更新 | 1d | 2021-10-24 A | 2021-10-24 A | 郑航舰 |

Changed:

| ID | Task | Start | Finish | Duration | Complete | Other |
| --- | --- | --- | --- | --- | --- | --- |
| 1 | **项目开发** |  |  |  | 26% → 38% | was named 软件项目开发 |
| 41 | **需求说明SRS，需求评审PPT** |  |  | 5d → 5d? | 0% → 100% |  |
| 42 | 需求说明初稿 |  | 2021-10-22 A |  | 0% → 100% |  |
| 43 | 小组会议 | 2021-10-23 A | 2021-10-23 A |  | 0% → 100% |  |
| 44 | 界面原型设计 | 2021-10-22 → 2021-10-24 A (+2d) | 2021-10-22 → 2021-10-24 A (+2d) |  | 0% → 100% | was named 原型设计 |
| 55 | **导出系统的逻辑模型** | 2021-10-22 → 2021-10-24 A (+2d) | 2021-10-22 → 2021-10-24 A (+2d) | 1d → 0d | 0% → 100% | was named 绘制需求用图; resources 郑航舰 → 王义博 |
| 56 | 绘制ER图 | 2021-10-22 → 2021-10-24 A (+2d) | 2021-10-22 → 2021-10-24 A (+2d) |  | 0% → 100% | resources 吴联想 → 王义博 |
| 57 | 绘制层次方框图 | 2021-10-22 → 2021-10-24 A (+2d) | 2021-10-22 → 2021-10-24 A (+2d) |  | 0% → 100% |  |
| 60 | 需求说明初稿修改 | 2021-10-23 → 2021-10-24 A (+1d) | 2021-10-23 → 2021-10-24 A (+1d) |  | 0% → 100% | resources 郑航舰 → 郑航舰; 王义博; 吴联想 |
| 61 | 需求说明PPT | 2021-10-23 → 2021-10-24 A (+1d) | 2021-10-25 → 2021-10-24 A (-1d) | 2d → 1d | 0% → 100% |  |

## Version 3 (saved 2021-10-26)

Note of the change: 更新 G11项目计划.mpp

Last finish stays 2022-01-05. Complete tasks 54 → 55.

Added:

| ID | Task | Duration | Start | Finish | Resources |
| --- | --- | --- | --- | --- | --- |
| 63 | 根据客户修改界面原型 | 1d | 2021-10-25 A | 2021-10-25 A | 郑航舰 |
| 64 | 需求说明评审 | 1d | 2021-10-27 | 2021-10-27 |  |

Changed:

| ID | Task | Finish | Duration | Complete |
| --- | --- | --- | --- | --- |
| 41 | **需求说明SRS，需求评审PPT** |  |  | 100% → 95% |
| 61 | 需求说明PPT | 2021-10-24 A → 2021-10-25 A (+1d) | 1d → 1.12d |  |

## Version 4 (saved 2021-10-27)

Note of the change: 更新 G11项目计划.mpp

Last finish stays 2022-01-05. Complete tasks 55 → 56.

Added:

| ID | Task | Duration | Start | Finish | Resources |
| --- | --- | --- | --- | --- | --- |
| 64 | PPT更新 | 1d | 2021-10-27 A | 2021-10-27 A | 王义博 |

## Version 5 (saved 2021-10-31)

Note of the change: Merge branch 'main' of github.com:lenovo-wu/G11ZUCC

Last finish stays 2022-01-05. Complete tasks 56 → 66.

Added:

| ID | Task | Duration | Start | Finish | Resources |
| --- | --- | --- | --- | --- | --- |
| 72 | 管理员界面模型 | 1d | 2021-10-31 A | 2021-10-31 A | 王义博 |
| 73 | 找女用户代表询问并得到反馈 | 1d | 2021-10-31 A | 2021-10-31 A | 郑航舰 |
| 74 | 根据用户反馈修改界面原型 | 1d | 2021-10-31 A | 2021-10-31 A | 郑航舰 |
| 75 | GIT创建分支 | 1d | 2021-10-31 A | 2021-10-31 A | 吴联想 |
| 76 | 更新project | 1d | 2021-10-31 | 2021-10-31 | 郑航舰 |
| 77 | SRS评审 | 1d | 2021-10-03 | 2021-10-03 |  |
| 93 | 小组会议 | 1d? | 2021-11-11 | 2021-11-11 |  |

Removed: 85 详细设计报告初稿; 86 人机界面完善; 87 过程设计; 88 PDL编写; 90 详细设计报告初稿修订; 91 详细设计报告PPT制作; 94 总体提报告及详细报告修订; 95 总体提报告及详细报告PPT修订; 98 确定代码编写风格; 99 数据库建立; 100 服务器部署; 101 代码编写及测试; 102 代码编写; 103 登录界面; 104 注册与忘记密码界面; 105 表白墙（发帖）模块; 106 回帖模块; 107 个人页面; 108 管理员显示用户信息; 109 管理员添加用户; 110 管理员删除用户; 111 修改密码页面; 112 页面整合与跳转逻辑; 113 代码走查; 114 登录模块实现; 115 管理员模块实现; 116 代码走查; 117 代码整合; 118 软件测试; 119 单元测试; 120 集成测试; 121 系统测试; 124 系统实现及测试报告初稿; 125 系统实现及测试报告初稿修订; 126 系统实现及测试报告PPT制作; 129 用户确认; 130 软件修改; 131 重新测试; 132 系统实现及测试报告修订; 133 系统实现及测试报告PPT修订; 136 修改项目计划; 137 修改需求分析; 138 用户bug反馈，修改; 139 修改设计报告; 140 项目总结报告初稿; 141 项目总结报告修改; 142 项目总结PPT制作

Changed:

| ID | Task | Start | Finish | Duration | Complete | Predecessors | Other |
| --- | --- | --- | --- | --- | --- | --- | --- |
| 1 | **项目开发** |  |  |  | 38% → 65% |  |  |
| 41 | **需求说明SRS，需求评审PPT** |  | 2021-10-27 → 2021-10-31 (+4d) | 5d? → 8d | 95% → 100% |  |  |
| 65 | 需求说明预评审 | 2021-10-27 A | 2021-10-27 A |  | 0% → 100% |  | was named 需求说明评审 |
| 66 | 小组会议 | 2021-11-12 → 2021-10-29 A (-14d) | 2021-11-12 → 2021-10-29 A (-14d) |  | 0% → 100% |  | resources 吴联想; 王义博; 郑航舰 → none |
| 67 | **SRS修订** |  |  | 5d → 5d? | 0% → 80% |  |  |
| 68 | 访谈 | 2021-10-29 → 2021-10-31 A (+2d) | 2021-11-01 → 2021-10-31 A (-1d) | 2d → 1d | 0% → 100% |  |  |
| 69 | 小组会议 | 2021-10-29 → 2021-10-31 A (+2d) | 2021-10-29 → 2021-10-31 A (+2d) |  | 0% → 100% |  |  |
| 70 | 需求说明修订 | 2021-10-29 → 2021-10-31 A (+2d) | 2021-10-29 → 2021-10-31 A (+2d) |  | 0% → 100% |  |  |
| 71 | 需求说明PPT修改 | 2021-10-30 → 2021-10-31 A (+1d) | 2021-10-30 → 2021-10-31 A (+1d) |  | 0% → 100% |  | resources 郑航舰 → 王义博 |
| 79 | 小组会议 | 2021-11-05 → 2021-11-03 (-2d) | 2021-11-05 → 2021-11-03 (-2d) |  |  |  |  |
| 90 | 小组会议 | 2021-11-13 → 2021-11-05 (-8d) | 2021-11-13 → 2021-11-05 (-8d) |  |  |  | resources 吴联想 → 王义博; 吴联想; 郑航舰 |
| 91 | **详细设计报告** |  |  | 5d → 5d? |  |  |  |
| 92 | 小组会议 | 2021-12-17 → 2021-11-11 (-36d) | 2021-12-17 → 2021-11-11 (-36d) | 1d → 1d? |  |  | resources 吴联想; 王义博; 郑航舰 → none |
| 94 | **总体设计及详细设计修订+翻转PPT1** |  |  | 5d → 5d? |  | 91 → none |  |
| 96 | **代码清单+测试用例+翻转PPT2** |  |  |  |  | 94 → none |  |
| 98 | **系统测试报告** |  |  | 5d → 5d? |  | 96 → none |  |
| 100 | **测试报告修订** |  |  |  |  | 98 → none |  |
| 102 | 项目总结报告，总评审PPT |  |  |  |  | 100 → none |  |

## Version 6 (saved 2021-11-03)

Note of the change: 更新 G11项目计划.mpp

Last finish stays 2022-01-05.

Changed:

| ID | Task | Start | Finish |
| --- | --- | --- | --- |
| 77 | SRS评审 | 2021-10-03 → 2021-11-03 (+31d) | 2021-10-03 → 2021-11-03 (+31d) |

## Version 7 (saved 2021-11-05)

Note of the change: 更新 G11项目计划.mpp

Last finish stays 2022-01-05. Complete tasks 66 → 72.

Added:

| ID | Task | Duration | Start | Finish | Resources |
| --- | --- | --- | --- | --- | --- |
| 78 | 界面原型修改 | 1d | 2021-11-03 A | 2021-11-03 A | 郑航舰 |
| 80 | 界面原型修改 | 1d | 2021-11-04 A | 2021-11-04 A | 王义博; 郑航舰 |
| 93 | 总体设计报告预评审 | 1d | 2021-11-10 | 2021-11-10 |  |

Changed:

| ID | Task | Start | Finish | Duration | Complete | Other |
| --- | --- | --- | --- | --- | --- | --- |
| 1 | **项目开发** |  |  |  | 65% → 68% |  |
| 67 | **SRS修订** |  | 2021-11-03 A |  | 80% → 100% |  |
| 76 | 更新project | 2021-10-31 A | 2021-10-31 A |  | 0% → 100% |  |
| 77 | SRS评审 | 2021-11-03 A | 2021-11-03 A |  | 0% → 100% |  |
| 79 | **总体设计报告** | 2021-11-04 A |  | 5d → 5d? | 0% → 17% |  |
| 81 | 小组会议 | 2021-11-03 → 2021-11-05 A (+2d) | 2021-11-03 → 2021-11-05 A (+2d) |  | 0% → 100% |  |
| 82 | 总体设计报告初稿 | 2021-11-05 A | 2021-11-08 → 2021-11-05 A (-3d) | 2d → 1d | 0% → 100% | resources 吴联想; 郑航舰 → 郑航舰 |
| 83 | 设想供选择的方案 |  |  |  |  | resources 吴联想 → 郑航舰 |
| 84 | 选择合理的方案 |  |  |  |  | resources 王义博 → 郑航舰 |
| 85 | 推荐最佳方案 |  |  |  |  | resources 王义博 → 王义博; 吴联想; 郑航舰 |
| 86 | 功能分解 |  |  |  |  | resources 吴联想 → 王义博 |
| 87 | 设计软件结构 |  |  |  |  | resources 吴联想 → 王义博 |
| 88 | 设计数据库 |  |  |  |  | resources 王义博 → 吴联想 |
| 89 | 制定测试计划 |  |  |  |  | resources 郑航舰 → 吴联想 |
| 90 | 书写文档 |  |  |  |  | resources 郑航舰 → none |
| 91 | 审查和复查 |  |  |  |  | resources 吴联想 → none |
| 94 | 小组会议 | 2021-11-11 → 2021-11-10 (-1d) | 2021-11-11 → 2021-11-10 (-1d) | 1d? → 1d |  | resources none → 王义博; 吴联想; 郑航舰 |
| 96 | 小组会议 | 2021-11-11 → 2021-11-12 (+1d) | 2021-11-11 → 2021-11-12 (+1d) | 1d? → 1d |  | resources none → 王义博; 吴联想; 郑航舰 |

## Version 8 (saved 2021-11-07)

Note of the change: 更新 G11项目计划.mpp

Last finish stays 2022-01-05. Complete tasks 72 → 73.

Changed:

| ID | Task | Start | Finish | Complete |
| --- | --- | --- | --- | --- |
| 1 | **项目开发** |  |  | 68% → 69% |
| 79 | **总体设计报告** |  |  | 17% → 22% |
| 92 | 小组会议 | 2021-11-05 A | 2021-11-05 A | 0% → 100% |

## Version 9 (saved 2021-11-10)

Note of the change: 更新 G11项目计划.mpp

Last finish stays 2022-01-05.

Changed:

| ID | Task | Other |
| --- | --- | --- |
| 90 | 书写文档 | resources none → 郑航舰 |
| 91 | 审查和复查 | resources none → 吴联想 |

## Version 10 (saved 2021-11-14)

Note of the change: Merge branch 'main' of github.com:lenovo-wu/G11ZUCC

Last finish stays 2022-01-05. Complete tasks 73 → 107.

Added:

| ID | Task | Duration | Start | Finish | Resources |
| --- | --- | --- | --- | --- | --- |
| 9 | 会议纪要撰写 | 1d | 2021-09-22 A | 2021-09-22 A | 吴联想 |
| 12 | 会议纪要撰写 | 1d | 2021-09-24 A | 2021-09-24 A | 吴联想 |
| 19 | 会议纪要撰写 | 1d | 2021-10-03 A | 2021-10-03 A | 吴联想 |
| 28 | 会议纪要撰写 | 1d | 2021-10-22 A | 2021-10-22 A | 吴联想 |
| 48 | 会议纪要撰写 | 1d | 2021-10-23 A | 2021-10-23 A | 吴联想 |
| 72 | 会议纪要撰写 | 1d | 2021-10-29 A | 2021-10-29 A | 吴联想 |
| 76 | 会议纪要撰写 | 1d | 2021-10-31 A | 2021-10-31 A | 吴联想 |
| 89 | 会议纪要撰写 | 1d | 2021-11-05 A | 2021-11-05 A | 吴联想 |
| 101 | 会议纪要撰写 | 1d | 2021-11-05 A | 2021-11-05 A | 吴联想 |
| 104 | 会议纪要撰写 | 1d | 2021-11-10 A | 2021-11-10 A | 吴联想 |
| 107 | 会议纪要撰写 | 1d | 2021-11-12 A | 2021-11-12 A | 吴联想 |
| 108 | **结构程序设计** | 0d | 2021-11-14 A | 2021-11-14 A |  |
| 109 | PDL语言编写 | 1d | 2021-11-14 A | 2021-11-14 A | 王义博 |
| 110 | PDL语言编写 | 1d | 2021-11-14 A | 2021-11-14 A | 吴联想 |
| 111 | PDL语言编写 | 1d | 2021-11-14 A | 2021-11-14 A | 郑航舰 |
| 112 | **人机界面设计** | 0d? | 2021-11-14 A | 2021-11-14 A |  |
| 113 | 系统响应时间 | 1d | 2021-11-14 A | 2021-11-14 A | 王义博 |
| 114 | **用户帮助设施** | 1d? | 2021-11-14 A | 2021-11-14 A |  |
| 115 | 用户界面原型体现 | 1d | 2021-11-14 A | 2021-11-14 A | 郑航舰 |
| 116 | 管理员界面原型体现 | 1d | 2021-11-14 A | 2021-11-14 A | 王义博 |
| 117 | **出错信息处理** | 1d | 2021-11-14 A | 2021-11-14 A |  |
| 118 | 用户界面原型体现 | 1d | 2021-11-14 A | 2021-11-14 A | 郑航舰 |
| 119 | 管理员界面原型体现 | 1d | 2021-11-14 A | 2021-11-14 A | 王义博 |
| 120 | 命令交互 | 1d | 2021-11-14 A | 2021-11-14 A | 王义博 |
| 121 | 数据库相关设计 | 1d | 2021-11-14 A | 2021-11-14 A | 王义博; 吴联想 |
| 122 | 业务流图 | 1d | 2021-11-14 A | 2021-11-14 A | 王义博 |
| 123 | PPT制作 | 1d | 2021-11-14 | 2021-11-14 | 王义博 |
| 124 | 项目计划书WBS小修订 | 1d | 2021-11-14 | 2021-11-14 | 郑航舰 |
| 125 | 详细设计预评审 | 1d | 2021-11-17 | 2021-11-17 |  |
| 126 | project更新 | 1d | 2021-11-14 | 2021-11-14 | 郑航舰 |
| 127 | 小组会议 | 1d | 2021-11-17 | 2021-11-17 | 王义博; 吴联想; 郑航舰 |
| 128 | 小组会议 | 1d | 2021-11-19 | 2021-11-19 | 王义博; 吴联想; 郑航舰 |

Changed:

| ID | Task | Start | Finish | Duration | Complete | Other |
| --- | --- | --- | --- | --- | --- | --- |
| 1 | **项目开发** |  |  |  | 69% → 83% |  |
| 71 | 小组会议 |  |  | 1d → 0.04d |  | resources none → 王义博; 吴联想; 郑航舰 |
| 86 | **总体设计报告** |  | 2021-11-10 A |  | 22% → 100% |  |
| 91 | 设想供选择的方案 | 2021-11-05 A | 2021-11-05 A |  | 0% → 100% |  |
| 92 | 选择合理的方案 | 2021-11-05 A | 2021-11-05 A |  | 0% → 100% |  |
| 93 | 推荐最佳方案 | 2021-11-05 A | 2021-11-05 A |  | 0% → 100% |  |
| 94 | 功能分解 | 2021-11-05 A | 2021-11-05 A |  | 0% → 100% |  |
| 95 | 设计软件结构 | 2021-11-06 A | 2021-11-08 A |  | 0% → 100% |  |
| 96 | 设计数据库 | 2021-11-06 A | 2021-11-08 A |  | 0% → 100% |  |
| 97 | 制定测试计划 | 2021-11-06 A | 2021-11-08 A |  | 0% → 100% |  |
| 98 | 书写文档 | 2021-11-06 A | 2021-11-06 A |  | 0% → 100% |  |
| 99 | 审查和复查 | 2021-11-06 A | 2021-11-06 A |  | 0% → 100% |  |
| 102 | 总体设计报告预评审 | 2021-11-10 A | 2021-11-10 A |  | 0% → 100% |  |
| 103 | 小组会议 | 2021-11-10 A | 2021-11-10 A |  | 0% → 100% |  |
| 105 | **详细设计报告** |  | 2021-11-17 → 2021-11-21 (+4d) | 5d? → 8d? | 0% → 68% |  |
| 106 | 小组会议 | 2021-11-12 A | 2021-11-12 A |  | 0% → 100% |  |

## Version 11 (saved 2021-11-17)

Note of the change: 更新 G11项目计划.mpp

Last finish stays 2022-01-05. Complete tasks 107 → 105.

Removed: 116 管理员界面原型体现; 119 管理员界面原型体现

Changed:

| ID | Task | Complete |
| --- | --- | --- |
| 105 | **详细设计报告** | 68% → 65% |

## Version 12 (saved 2021-11-21)

Last finish stays 2022-01-05. Complete tasks 105 → 123.

Added:

| ID | Task | Duration | Start | Finish | Resources |
| --- | --- | --- | --- | --- | --- |
| 126 | 会议纪要撰写 | 1d | 2021-11-17 A | 2021-11-17 A | 吴联想 |
| 129 | 会议纪要撰写 | 1d | 2021-11-19 A | 2021-11-19 A | 吴联想 |
| 131 | 会议纪要撰写 | 1d | 2021-11-24 A | 2021-11-24 A | 吴联想 |
| 132 | 前后端代码库基础建立 | 1d | 2021-11-19 A | 2021-11-19 A | 吴联想 |
| 133 | 用户界面原型修改 | 1d | 2021-11-21 A | 2021-11-21 A | 郑航舰 |
| 134 | 管理员界面原型修改 | 1d | 2021-11-21 A | 2021-11-21 A | 王义博 |
| 135 | **详细设计模块分配（含PDL编写）** | 1d? | 2021-11-19 A | 2021-11-19 A |  |
| 136 | 注册登录+用户中心 | 1d | 2021-11-19 A | 2021-11-19 A | 吴联想 |
| 137 | 用户模块除了用户中心 | 1d | 2021-11-19 A | 2021-11-19 A | 王义博 |
| 138 | 管理员模块 | 1d | 2021-11-19 A | 2021-11-19 A | 郑航舰 |
| 139 | PPT修改 | 1d | 2021-11-21 A | 2021-11-21 A | 王义博 |
| 140 | 详细设计修订 | 1d | 2021-11-21 A | 2021-11-21 A | 郑航舰 |
| 141 | 总体设计及详细设计正式评审 | 1d | 2021-11-24 | 2021-11-24 |  |
| 143 | **具体实现模块** | 6d | 2021-11-22 | 2021-11-28 |  |
| 144 | 注册登录+用户中心 | 1d | 2021-11-19 | 2021-11-19 | 王义博 |
| 145 | 用户模块除了用户中心 | 1d | 2021-11-19 | 2021-11-19 | 郑航舰 |
| 146 | 管理员模块 | 1d | 2021-11-19 | 2021-11-19 | 吴联想 |
| 149 | **功能测试模块** | 6d | 2021-11-29 | 2021-12-05 |  |
| 150 | 注册登录+用户中心 | 1d | 2021-11-19 | 2021-11-19 | 郑航舰 |
| 151 | 用户模块除了用户中心 | 1d | 2021-11-19 | 2021-11-19 | 吴联想 |
| 152 | 管理员模块 | 1d | 2021-11-19 | 2021-11-19 | 王义博 |
| 153 | <新任务> | 1d? | 2021-12-02 | 2021-12-02 |  |

Changed:

| ID | Task | Start | Finish | Duration | Complete | Other |
| --- | --- | --- | --- | --- | --- | --- |
| 1 | **项目开发** |  |  |  | 83% → 85% |  |
| 105 | **详细设计报告** |  |  |  | 65% → 100% |  |
| 121 | PPT制作 | 2021-11-14 A | 2021-11-14 A |  | 0% → 100% |  |
| 122 | 项目计划书WBS小修订 | 2021-11-14 A | 2021-11-14 A |  | 0% → 100% |  |
| 123 | 详细设计预评审 | 2021-11-17 A | 2021-11-17 A |  | 0% → 100% |  |
| 124 | project更新 | 2021-11-14 A | 2021-11-14 A |  | 0% → 100% |  |
| 125 | 小组会议 | 2021-11-17 A | 2021-11-17 A |  | 0% → 100% |  |
| 127 | **总体设计及详细设计修订+翻转PPT1** |  | 2021-11-24 → 2021-11-28 (+4d) | 5d? → 8d? | 0% → 92% |  |
| 128 | 小组会议 | 2021-11-19 A | 2021-11-19 A |  | 0% → 100% | resources 吴联想; 王义博 → 吴联想; 王义博; 郑航舰 |
| 130 | 小组会议 | 2021-11-19 → 2021-11-24 A (+5d) | 2021-11-19 → 2021-11-24 A (+5d) |  | 0% → 100% | resources 王义博; 吴联想; 郑航舰 → 王义博; 郑航舰; 吴联想 |
| 147 | 小组会议 | 2021-11-25 → 2021-11-26 (+1d) | 2021-11-25 → 2021-11-26 (+1d) |  |  |  |

## Version 13 (saved 2021-11-24)

Note of the change: 更新 G11项目计划.mpp

Last finish stays 2022-01-05.

Changed:

| ID | Task | Start | Finish | Duration | Complete |
| --- | --- | --- | --- | --- | --- |
| 1 | **项目开发** |  |  |  | 85% → 67% |
| 143 | **具体实现模块** |  | 2021-11-28 → 2021-12-01 (+3d) | 6d → 8d |  |
| 144 | 注册登录+用户中心 |  | 2021-11-19 → 2021-12-01 (+12d) | 1d → 9d |  |
| 145 | 用户模块除了用户中心 |  | 2021-11-19 → 2021-12-01 (+12d) | 1d → 9d |  |
| 146 | 管理员模块 |  | 2021-11-19 → 2021-12-01 (+12d) | 1d → 9d |  |
| 150 | 注册登录+用户中心 | 2021-11-19 → 2021-11-29 (+10d) | 2021-11-19 → 2021-12-05 (+16d) | 1d → 6d |  |
| 151 | 用户模块除了用户中心 | 2021-11-19 → 2021-11-29 (+10d) | 2021-11-19 → 2021-12-05 (+16d) | 1d → 6d |  |
| 152 | 管理员模块 | 2021-11-19 → 2021-11-29 (+10d) | 2021-11-19 → 2021-12-05 (+16d) | 1d → 6d |  |

## Version 14 (saved 2021-11-28)

Note of the change: 更新 G11项目计划.mpp

Last finish stays 2022-01-05.

Added:

| ID | Task | Duration | Start | Finish | Resources |
| --- | --- | --- | --- | --- | --- |
| 148 | 会议纪要 撰写 | 1d | 2021-11-26 | 2021-11-26 | 吴联想 |
| 149 | 原型（添加认领功能） | 1d | 2021-11-25 | 2021-11-25 | 郑航舰 |
| 150 | 代码清单 | 1d | 2021-11-26 | 2021-11-26 | 郑航舰; 王义博; 吴联想 |
| 151 | PPT制作 | 1d | 2021-11-28 | 2021-11-28 | 王义博 |
| 152 | 实现模块评审 | 1d | 2021-12-01 | 2021-12-01 |  |

Changed:

| ID | Task | Start | Finish | Duration | Complete | Other |
| --- | --- | --- | --- | --- | --- | --- |
| 1 | **项目开发** |  |  |  | 67% → 65% |  |
| 158 | 小组会议 | 2021-12-02 → 2021-12-01 (-1d) | 2021-12-02 → 2021-12-01 (-1d) | 1d? → 1d |  | was named <新任务>; resources none → 王义博; 吴联想; 郑航舰 |

## Version 15 (saved 2021-12-08)

Note of the change: Update G11项目计划.mpp

Last finish stays 2022-01-05. Complete tasks 123 → 141.

Added:

| ID | Task | Duration | Start | Finish | Resources |
| --- | --- | --- | --- | --- | --- |
| 155 | 翻转PPT2 | 1d | 2021-12-08 A | 2021-12-08 A | 王义博 |
| 157 | 会议纪要撰写 | 1d | 2021-12-03 A | 2021-12-03 A | 吴联想 |
| 158 | 小组会议 | 1d | 2021-12-05 A | 2021-12-05 A | 王义博; 吴联想; 郑航舰 |
| 159 | 会议纪要撰写 | 1d | 2021-12-05 A | 2021-12-05 A | 吴联想 |
| 164 | 继续完成代码实现部分 | 6d | 2021-12-01 A | 2021-12-08 A | 王义博; 吴联想; 郑航舰 |
| 165 | 接口文档编写 | 1d | 2021-12-08 A | 2021-12-08 A | 王义博; 吴联想; 郑航舰 |
| 166 | 小组会议 | 1d | 2021-12-08 | 2021-12-08 | 王义博; 吴联想; 郑航舰 |
| 167 | 预评审 | 1d | 2021-12-08 | 2021-12-08 |  |

Changed:

| ID | Task | Start | Finish | Complete | Other |
| --- | --- | --- | --- | --- | --- |
| 1 | **项目开发** |  |  | 65% → 84% |  |
| 127 | **总体设计及详细设计修订+翻转PPT1** |  |  | 92% → 100% |  |
| 141 | 总体设计及详细设计正式评审 | 2021-11-24 A | 2021-11-24 A | 0% → 100% |  |
| 142 | **代码清单+测试用例+翻转PPT2** |  | 2021-12-01 A | 0% → 100% |  |
| 143 | **具体实现模块** |  | 2021-12-01 A | 0% → 100% |  |
| 144 | 注册登录+用户中心 | 2021-11-19 A | 2021-12-01 A | 0% → 100% |  |
| 145 | 用户模块除了用户中心 | 2021-11-19 A | 2021-12-01 A | 0% → 100% |  |
| 146 | 管理员模块 | 2021-11-19 A | 2021-12-01 A | 0% → 100% |  |
| 147 | 小组会议 | 2021-11-26 A | 2021-11-26 A | 0% → 100% |  |
| 148 | 会议纪要 撰写 | 2021-11-26 A | 2021-11-26 A | 0% → 100% |  |
| 149 | 原型（添加认领功能） | 2021-11-25 A | 2021-11-25 A | 0% → 100% |  |
| 150 | 代码清单 | 2021-11-26 A | 2021-11-26 A | 0% → 100% |  |
| 151 | PPT制作 | 2021-11-28 A | 2021-11-28 A | 0% → 100% |  |
| 152 | 实现模块评审 | 2021-12-01 A | 2021-12-01 A | 0% → 100% |  |
| 153 | 小组会议 | 2021-12-01 A | 2021-12-01 A | 0% → 100% |  |
| 154 | **系统测试报告** |  |  | 0% → 38% |  |
| 156 | 小组会议 | 2021-12-03 A | 2021-12-03 A | 0% → 100% | resources 吴联想; 王义博; 郑航舰 → 王义博; 吴联想; 郑航舰 |

## Version 16 (saved 2021-12-12)

Note of the change: Update G11项目计划.mpp

Last finish stays 2022-01-05. Complete tasks 141 → 151.

Added:

| ID | Task | Duration | Start | Finish | Resources |
| --- | --- | --- | --- | --- | --- |
| 170 | 小组会议纪要撰写 | 1d | 2021-12-08 A | 2021-12-08 A | 吴联想 |
| 171 | 小组会议 | 1d | 2021-12-10 A | 2021-12-10 A | 王义博; 吴联想; 郑航舰 |
| 172 | 小组会议纪要撰写 | 1d | 2021-12-10 A | 2021-12-10 A | 吴联想 |
| 173 | PPT制作 | 1d | 2021-12-12 A | 2021-12-12 A | 王义博 |
| 174 | 用户模块继续完成 | 1d | 2021-12-12 A | 2021-12-12 A | 郑航舰 |
| 175 | 邮箱验证继续完成 | 1d | 2021-12-12 A | 2021-12-12 A | 王义博 |
| 176 | 部分单元测试代码编写 | 1d | 2021-12-12 A | 2021-12-12 A | 吴联想 |
| 177 | 测试文档修订 | 1d | 2021-12-12 A | 2021-12-12 A | 郑航舰 |
| 178 | project更新 | 1d | 2021-12-12 A | 2021-12-12 A | 郑航舰 |
| 179 | 用户手册 | 1d | 2021-12-12 | 2021-12-12 |  |
| 180 | 测试报告修订预评审 | 1d | 2021-12-15 | 2021-12-15 |  |
| 182 | 小组会议 | 1d | 2021-12-15 | 2021-12-15 | 王义博; 吴联想; 郑航舰 |
| 183 | <新任务> | 1d? | 2021-12-16 | 2021-12-16 |  |
| 184 | <新任务> | 1d? | 2021-12-16 | 2021-12-16 |  |
| 185 | <新任务> | 1d? | 2021-12-16 | 2021-12-16 |  |

Changed:

| ID | Task | Start | Finish | Duration | Complete |
| --- | --- | --- | --- | --- | --- |
| 1 | **项目开发** |  |  |  | 84% → 87% |
| 168 | **测试报告修订** | 2021-12-09 → 2021-12-06 (-3d) |  | 5d? → 8d | 0% → 83% |
| 169 | 小组会议 | 2021-12-10 → 2021-12-08 A (-2d) | 2021-12-10 → 2021-12-08 A (-2d) |  | 0% → 100% |
| 181 | **项目总结报告，总评审PPT** |  |  | 10d → 10d? |  |

## Version 17 (saved 2021-12-15)

Note of the change: Merge branch 'main' of github.com:lenovo-wu/G11ZUCC

Last finish stays 2022-01-05. Complete tasks 151 → 155.

Added:

| ID | Task | Duration | Start | Finish | Resources |
| --- | --- | --- | --- | --- | --- |
| 181 | 程序清单 | 1d | 2021-12-15 A | 2021-12-15 A | 王义博; 吴联想; 郑航舰 |
| 182 | 单元测试代码编写 | 1d | 2021-12-15 A | 2021-12-15 A | 郑航舰 |
| 183 | 单元测试代码编写 | 1d | 2021-12-15 A | 2021-12-15 A | 王义博 |

Changed:

| ID | Task | Start | Finish | Duration | Complete | Other |
| --- | --- | --- | --- | --- | --- | --- |
| 168 | **测试报告修订** |  |  |  | 83% → 93% |  |
| 176 | 部分单元测试代码编写 |  |  | 1d → 0.25d |  |  |
| 180 | 用户手册 | 2021-12-12 → 2021-12-15 A (+3d) | 2021-12-12 → 2021-12-15 A (+3d) |  | 0% → 100% | resources none → 王义博 |

## Version 18 (saved 2021-12-22)

Note of the change: Update G11项目计划.mpp

Last finish stays 2022-01-05. Complete tasks 155 → 175.

Added:

| ID | Task | Duration | Start | Finish | Resources |
| --- | --- | --- | --- | --- | --- |
| 186 | 小组会议报告撰写 | 1d | 2021-12-15 A | 2021-12-15 A | 吴联想 |
| 187 | 小组会议 | 1d | 2021-12-17 A | 2021-12-17 A | 王义博; 吴联想; 郑航舰 |
| 188 | 小组会议报告撰写 | 1d | 2021-12-17 A | 2021-12-17 A | 吴联想 |
| 189 | 代码优化 | 4d | 2021-12-18 A | 2021-12-22 A | 王义博 |
| 190 | 代码优化 | 4d | 2021-12-18 A | 2021-12-22 A | 郑航舰 |
| 191 | 项目部署 | 4d | 2021-12-18 A | 2021-12-22 A | 吴联想 |
| 195 | 集成测试 | 1d | 2021-12-22 A | 2021-12-22 A | 吴联想 |
| 196 | 集成测试 | 1d | 2021-12-22 A | 2021-12-22 A | 王义博 |
| 197 | 系统测试 | 1d | 2021-12-22 A | 2021-12-22 A | 郑航舰 |
| 198 | 详细设计文档修订 | 1d | 2021-12-22 A | 2021-12-22 A | 郑航舰 |
| 199 | 小组会议 | 1d | 2021-12-22 | 2021-12-22 | 王义博; 吴联想; 郑航舰 |
| 200 | 项目总评审 | 1d | 2021-12-22 | 2021-12-22 |  |

Changed:

| ID | Task | Start | Finish | Duration | Complete | Other |
| --- | --- | --- | --- | --- | --- | --- |
| 1 | **项目开发** |  |  |  | 87% → 99% |  |
| 154 | **系统测试报告** |  | 2021-12-08 A |  | 38% → 100% |  |
| 160 | **功能测试模块** | 2021-11-29 A | 2021-12-05 A |  | 0% → 100% |  |
| 161 | 注册登录+用户中心 | 2021-11-29 A | 2021-12-05 A |  | 0% → 100% |  |
| 162 | 用户模块除了用户中心 | 2021-11-29 A | 2021-12-05 A |  | 0% → 100% |  |
| 163 | 管理员模块 | 2021-11-29 A | 2021-12-05 A |  | 0% → 100% |  |
| 166 | 小组会议 | 2021-12-08 A | 2021-12-08 A |  | 0% → 100% |  |
| 167 | 预评审 | 2021-12-08 A | 2021-12-08 A |  | 0% → 100% |  |
| 168 | **测试报告修订** |  | 2021-12-15 A |  | 93% → 100% |  |
| 179 | 测试报告修订预评审 | 2021-12-15 A | 2021-12-15 A |  | 0% → 100% |  |
| 184 | **项目总结报告，总评审PPT** |  |  |  | 0% → 92% |  |
| 185 | 小组会议 | 2021-12-15 A | 2021-12-15 A |  | 0% → 100% |  |
| 192 | 测试报告修订 | 2021-12-16 → 2021-12-22 A (+6d) | 2021-12-16 → 2021-12-22 A (+6d) | 1d? → 1d | 0% → 100% | was named <新任务>; resources none → 郑航舰 |
| 193 | 项目开发总结修订 | 2021-12-16 → 2021-12-22 A (+6d) | 2021-12-16 → 2021-12-22 A (+6d) | 1d? → 1d | 0% → 100% | was named <新任务>; resources none → 郑航舰 |
| 194 | PPT制作 | 2021-12-16 → 2021-12-22 A (+6d) | 2021-12-16 → 2021-12-22 A (+6d) | 1d? → 1d | 0% → 100% | was named <新任务>; resources none → 王义博 |

## Version 19 (saved 2021-12-26)

Note of the change: Update G11项目计划.mpp

Last finish stays 2022-01-05. Complete tasks 175 → 181.

Added:

| ID | Task | Duration | Start | Finish | Resources |
| --- | --- | --- | --- | --- | --- |
| 200 | 会议纪要撰写 | 1d | 2021-12-24 A | 2021-12-24 A | 吴联想 |
| 201 | 系统测试 | 1d | 2021-12-26 A | 2021-12-26 A | 郑航舰 |
| 202 | 集成测试 | 1d | 2021-12-26 A | 2021-12-26 A | 王义博 |
| 203 | 项目计划书修订 | 1d | 2021-12-26 A | 2021-12-26 A | 郑航舰 |
| 204 | PPT制作 | 1d | 2021-12-26 A | 2021-12-26 A | 王义博 |

Changed:

| ID | Task | Start | Finish | Complete |
| --- | --- | --- | --- | --- |
| 184 | **项目总结报告，总评审PPT** |  |  | 92% → 97% |
| 199 | 小组会议 | 2021-12-22 → 2021-12-24 A (+2d) | 2021-12-22 → 2021-12-24 A (+2d) | 0% → 100% |
| 205 | 项目总评审 | 2021-12-22 → 2021-12-29 (+7d) | 2021-12-22 → 2021-12-29 (+7d) |  |
| 206 | 课程作业评审 | 2022-01-05 → 2022-01-01 (-4d) | 2022-01-05 → 2022-01-01 (-4d) |  |
